Schedule from MS Project, 2025-10-20 to 2026-03-03, costs in $, A marks actual dates.

## Calendars

- Standard: Mon-Fri 08:00-12:00, 13:00-17:00; Sat-Sun off.

## Schedule

| ID | WBS | Task | Type | Duration | Start | Finish | Predecessors | Complete | Remaining | Baseline start | Baseline finish | Baseline duration | Total slack | Free slack | Constraint | Work | Cost | Baseline cost | Actual cost | UID | CustomID |
| --- | --- | --- | --- | --- | --- | --- | --- | --- | --- | --- | --- | --- | --- | --- | --- | --- | --- | --- | --- | --- | --- |
| 1 | 1 | **Overlake Square-Rough_Framing_Schedule** |  | 97d | 2025-10-20 A | 2026-03-03 |  | 19% | 78.58d | 2025-10-20 | 2026-03-04 | 98d | 0d |  |  | 1792h | 3,078,000 | 3,105,000 | 598,320 |  |  |
| 2 | 1.1 | **Coordination** |  | 0d | 2025-10-20 | 2025-10-20 |  |  |  |  |  |  | 97d |  |  |  |  |  |  | 55 |  |
| 3 | 1.1.1 | Plumbing | milestone | 0d | 2025-10-20 | 2025-10-20 |  |  |  |  |  |  | 97d |  | start no earlier than 2025-10-20 |  |  |  |  | 59 | A510 |
| 4 | 1.1.2 | Mechanical | milestone | 0d | 2025-10-20 | 2025-10-20 |  |  |  |  |  |  | 97d |  | start no earlier than 2025-10-20 |  |  |  |  | 58 | A480 |
| 5 | 1.1.3 | Windows & Doors | milestone | 0d | 2025-10-20 | 2025-10-20 |  |  |  |  |  |  | 97d |  | start no earlier than 2025-10-20 |  |  |  |  | 61 | A500 |
| 6 | 1.1.4 | Balconies | milestone | 0d | 2025-10-20 | 2025-10-20 |  |  |  |  |  |  | 97d |  | start no earlier than 2025-10-20 |  |  |  |  | 63 | A520 |
| 7 | 1.1.5 | Structural Steel | milestone | 0d | 2025-10-20 | 2025-10-20 |  |  |  |  |  |  | 97d |  | start no earlier than 2025-10-20 |  |  |  |  | 76 | A610 |
| 8 | 1.1.6 | Fire Wall + Shafts | milestone | 0d | 2025-10-20 | 2025-10-20 |  |  |  |  |  |  | 97d |  | start no earlier than 2025-10-20 |  |  |  |  | 77 | A620 |
| 9 | 1.1.7 | Elevator | milestone | 0d | 2025-10-20 | 2025-10-20 |  |  |  |  |  |  | 97d |  | start no earlier than 2025-10-20 |  |  |  |  | 78 | A630 |
| 10 | 1.2 | **Project Management** |  | 0d | 2025-10-20 | 2025-10-20 |  |  |  |  |  |  | 97d |  | start no earlier than 2025-10-20 |  |  |  |  | 56 |  |
| 11 | 1.2.1 | Wade Brown Construction | milestone | 0d | 2025-10-20 | 2025-10-20 |  |  |  |  |  |  | 97d |  | start no earlier than 2025-10-20 |  |  |  |  | 64 | A530 |
| 12 | 1.2.2 | Atlas Supply | milestone | 0d | 2025-10-20 | 2025-10-20 |  |  |  |  |  |  | 97d |  | start no earlier than 2025-10-20 |  |  |  |  | 67 | A550 |
| 13 | 1.2.3 | Matheus Lumber | milestone | 0d | 2025-10-20 | 2025-10-20 |  |  |  |  |  |  | 97d |  | start no earlier than 2025-10-20 |  |  |  |  | 66 | A540 |
| 14 | 1.2.4 | Global Metal | milestone | 0d | 2025-10-20 | 2025-10-20 |  |  |  |  |  |  | 97d |  | start no earlier than 2025-10-20 |  |  |  |  | 71 | A560 |
| 15 | 1.2.5 | Boise Cascade | milestone | 0d | 2025-10-20 | 2025-10-20 |  |  |  |  |  |  | 97d |  | start no earlier than 2025-10-20 |  |  |  |  | 75 | A600 |
| 16 | 1.3 | **Planning / Execution** |  | 0d | 2025-10-20 | 2025-10-20 |  |  |  |  |  |  | 97d |  |  |  |  |  |  | 72 |  |
| 17 | 1.3.1 | RFI's | milestone | 0d | 2025-10-20 | 2025-10-20 |  |  |  |  |  |  | 97d |  | start no earlier than 2025-10-20 |  |  |  |  | 73 | A580 |
| 18 | 1.3.2 | Submittals | milestone | 0d | 2025-10-20 | 2025-10-20 |  |  |  |  |  |  | 97d |  | start no earlier than 2025-10-20 |  |  |  |  | 74 | A590 |
| 19 | 1.4 | **Work Schedule** |  | 92d | 2025-10-27 A | 2026-03-03 |  | 19% | 74.53d |  |  |  | 0d |  |  | 1792h | 3,078,000 |  | 598,320 | 79 |  |
| 20 | 1.4.1 | **Rough Frame / Zone 1** |  | 79d | 2025-10-27 A | 2026-02-12 |  | 37% | 49.96d | 2025-10-30 | 2026-01-28 | 65d | 13d |  |  | 496h | 855,000 | 801,000 | 305,640 |  |  |
| 21 | 1.4.1.1 | Zone 1/Level 4 Wall |  | 9d | 2025-10-27 A | 2025-11-06 A | 65FS+5d | 100% |  | 2025-10-30 | 2025-11-06 | 6d |  |  |  | 72h | 162,000 | 108,000 | 162,000 |  | A60 |
| 22 | 1.4.1.2 | Zone 1/Level 5 Floor |  | 6d | 2025-11-07 A | 2025-11-14 A | 21 | 100% |  | 2025-11-07 | 2025-11-14 | 6d |  |  |  | 48h | 54,000 | 54,000 | 54,000 |  | A70 |
| 23 | 1.4.1.3 | Zone 1/Level 5 Wall |  | 12d | 2025-11-21 A | 2025-12-08 | 32FS+4d | 83% | 2d | 2025-11-14 | 2025-11-21 | 6d | 12d | 0d |  | 48h | 108,000 | 108,000 | 89,640 |  | A80 |
| 24 | 1.4.1.4 | Zone 1/Level 6 Floor |  | 5d | 2025-12-09 | 2025-12-15 | 23 |  |  | 2025-11-24 | 2025-11-28 | 5d | 56d |  |  | 40h | 45,000 | 45,000 |  |  | A90 |
| 25 | 1.4.1.5 | Zone 1/Level 6 Wall |  | 6d | 2025-12-17 | 2025-12-24 | 34 |  |  | 2025-12-02 | 2025-12-09 | 6d | 12d | 0d |  | 48h | 108,000 | 108,000 |  |  | A100 |
| 26 | 1.4.1.6 | Zone 1/Level 7 Floor |  | 6d | 2025-12-25 | 2026-01-01 | 25 |  |  | 2025-12-10 | 2025-12-17 | 6d | 43d |  |  | 48h | 54,000 | 54,000 |  |  | A110 |
| 27 | 1.4.1.7 | Zone 1/Level 7 Wall |  | 6d | 2026-01-02 | 2026-01-09 | 36 |  |  | 2025-12-18 | 2025-12-25 | 6d | 12d | 0d |  | 48h | 108,000 | 108,000 |  |  | A120 |
| 28 | 1.4.1.8 | Zone 1/Level 8 Floor |  | 5d | 2026-01-12 | 2026-01-16 | 27 |  |  | 2025-12-26 | 2026-01-01 | 5d | 32d |  |  | 40h | 45,000 | 45,000 |  |  | A130 |
| 29 | 1.4.1.9 | Zone 1/Level 8 Wall |  | 6d | 2026-01-19 | 2026-01-26 | 38 |  |  | 2026-01-02 | 2026-01-09 | 6d | 12d | 0d |  | 48h | 108,000 | 108,000 |  | 10 | A140 |
| 30 | 1.4.1.10 | Zone 1/Roof |  | 7d | 2026-02-04 | 2026-02-12 | 40 |  |  | 2026-01-20 | 2026-01-28 | 7d | 12d | 0d |  | 56h | 63,000 | 63,000 |  | 11 | A150 |

Notes:
- 1: 14828739
- 2: 14829089
- 3: 14829090
- 4: 14829091
- 5: 14829092
- 6: 14829093
- 7: 14829094
- 8: 14829095
- 9: 14829096
- 10: 14829097
- 11: 14829098
- 12: 14829099
- 13: 14829100
- 14: 14829101
- 15: 14829102
- 16: 14829103
- 17: 14829104
- 18: 14829105
- 19: 14829106
- 20: 14828745
- 21: 14828746
- 22: 14828747
- 23: 14828748
- 24: 14828749
- 25: 14828750
- 26: 14828751
- 27: 14828752
- 28: 14828753
- 29: 14828754
- 30: 14828755

| ID | WBS | Task | Duration | Start | Finish | Predecessors | Complete | Remaining | Baseline start | Baseline finish | Baseline duration | Total slack | Free slack | Work | Cost | Baseline cost | Actual cost | UID | CustomID |
| --- | --- | --- | --- | --- | --- | --- | --- | --- | --- | --- | --- | --- | --- | --- | --- | --- | --- | --- | --- |
| 31 | 1.4.2 | **Rough Frame / Zone 2** | 71d | 2025-11-07 A | 2026-02-13 |  | 21% | 56.26d | 2025-11-07 | 2026-01-30 | 61d | 12d |  | 440h | 765,000 | 774,000 | 162,000 | 12 |  |
| 32 | 1.4.2.1 | Zone 2/Level 4 Wall | 6d | 2025-11-07 A | 2025-11-14 A | 21 | 100% |  | 2025-11-07 | 2025-11-13 | 5d |  |  | 48h | 108,000 | 90,000 | 108,000 | 13 | A160 |
| 33 | 1.4.2.2 | Zone 2/Level 5 Floor | 5d | 2025-12-01 A | 2025-12-05 A | 32FS+10d | 100% |  | 2025-11-17 | 2025-12-01 | 6d |  |  | 48h | 54,000 | 54,000 | 54,000 | 14 | A170 |
| 34 | 1.4.2.3 | Zone 2/Level 5 Wall | 6d | 2025-12-09 | 2025-12-16 | 23 |  |  | 2025-11-24 | 2025-12-01 | 6d | 12d | 0d | 48h | 108,000 | 108,000 |  | 15 | A180 |
| 35 | 1.4.2.4 | Zone 2/Level 6 Floor | 6d | 2025-12-17 | 2025-12-24 | 34 |  |  | 2025-12-02 | 2025-12-09 | 6d | 49d |  | 48h | 54,000 | 54,000 |  | 16 | A190 |
| 36 | 1.4.2.5 | Zone 2/Level 6 Wall | 6d | 2025-12-25 | 2026-01-01 | 25 |  |  | 2025-12-10 | 2025-12-17 | 6d | 12d | 0d | 48h | 108,000 | 108,000 |  | 17 | A200 |
| 37 | 1.4.2.6 | Zone 2/Level 7 Floor | 6d | 2026-01-02 | 2026-01-09 | 36 |  |  | 2025-12-18 | 2025-12-25 | 6d | 37d |  | 48h | 54,000 | 54,000 |  | 18 | A210 |
| 38 | 1.4.2.7 | Zone 2/Level 7 Wall | 5d | 2026-01-12 | 2026-01-16 | 27 |  |  | 2025-12-26 | 2026-01-01 | 5d | 12d | 0d | 40h | 90,000 | 90,000 |  | 19 | A220 |
| 39 | 1.4.2.8 | Zone 2/Level 8 Floor | 6d | 2026-01-19 | 2026-01-26 | 38 |  |  | 2026-01-02 | 2026-01-09 | 6d | 26d |  | 48h | 54,000 | 54,000 |  | 20 | A230 |
| 40 | 1.4.2.9 | Zone 2/Level 8 Wall | 6d | 2026-01-27 | 2026-02-03 | 29 |  |  | 2026-01-12 | 2026-01-19 | 6d | 12d | 0d | 48h | 108,000 | 108,000 |  | 21 | A240 |
| 41 | 1.4.2.10 | Zone 2/Roof | 1d | 2026-02-13 | 2026-02-13 | 30 |  |  | 2026-01-29 | 2026-01-30 | 2d | 12d | 0d | 16h | 27,000 | 54,000 |  | 22 | A250 |
| 42 | 1.4.3 | **Rough Frame / Zone 3** | 60d | 2025-12-03 A | 2026-02-24 |  | 10% | 53.79d | 2025-12-04 | 2026-02-25 | 60d | 5d |  | 464h | 792,000 | 792,000 | 108,000 | 24 |  |
| 43 | 1.4.3.1 | Zone 3/Level 4 Wall | 6d | 2025-12-03 A | 2025-12-10 A | 66FS+3d | 100% |  | 2025-12-04 | 2025-12-11 | 6d |  |  | 48h | 108,000 | 108,000 | 108,000 | 25 | A260 |
| 44 | 1.4.3.2 | Zone 3/Level 5 Floor | 6d | 2025-12-11 | 2025-12-18 | 43 |  |  | 2025-12-12 | 2025-12-19 | 6d | 53d |  | 48h | 54,000 | 54,000 |  | 26 | A270 |
| 45 | 1.4.3.3 | Zone 3/Level 5 Wall | 6d | 2025-12-19 | 2025-12-26 | 54 |  |  | 2025-12-22 | 2025-12-29 | 6d | 0d |  | 48h | 108,000 | 108,000 |  | 27 | A280 |
| 46 | 1.4.3.4 | Zone 3/Level 6 Floor | 6d | 2025-12-29 | 2026-01-05 | 45 |  |  | 2025-12-30 | 2026-01-06 | 6d | 41d |  | 48h | 54,000 | 54,000 |  | 28 | A290 |
| 47 | 1.4.3.5 | Zone 3/Level 6 Wall | 6d | 2026-01-05 | 2026-01-12 | 56 |  |  | 2026-01-06 | 2026-01-13 | 6d | 0d |  | 48h | 108,000 | 108,000 |  | 29 | A300 |
| 48 | 1.4.3.6 | Zone 3/Level 7 Floor | 5d | 2026-01-13 | 2026-01-19 | 47 |  |  | 2026-01-14 | 2026-01-20 | 5d | 31d |  | 40h | 45,000 | 45,000 |  | 30 | A310 |
| 49 | 1.4.3.7 | Zone 3/Level 7 Wall | 6d | 2026-01-19 | 2026-01-26 | 58 |  |  | 2026-01-20 | 2026-01-27 | 6d | 0d |  | 48h | 108,000 | 108,000 |  | 31 | A320 |
| 50 | 1.4.3.8 | Zone 3/Level 8 Floor | 6d | 2026-01-27 | 2026-02-03 | 49 |  |  | 2026-01-28 | 2026-02-04 | 6d | 20d |  | 48h | 54,000 | 54,000 |  | 32 | A330 |
| 51 | 1.4.3.9 | Zone 3/Level 8 Wall | 6d | 2026-02-03 | 2026-02-10 | 60 |  |  | 2026-02-04 | 2026-02-11 | 6d | 0d |  | 48h | 108,000 | 108,000 |  | 33 | A340 |
| 52 | 1.4.3.10 | Zone 3/Roof | 5d | 2026-02-18 | 2026-02-24 | 62 |  |  | 2026-02-19 | 2026-02-25 | 5d | 0d |  | 40h | 45,000 | 45,000 |  | 34 | A350 |
| 53 | 1.4.4 | **Rough Frame / Zone 4** | 59d | 2025-12-11 A | 2026-03-03 |  | 3% | 57.45d | 2025-12-12 | 2026-03-04 | 59d | 0d |  | 392h | 666,000 | 666,000 | 22,680 | 36 |  |
| 54 | 1.4.4.1 | Zone 4/Level 4 Wall | 6d | 2025-12-11 A | 2025-12-18 | 43 | 21% | 4.71d | 2025-12-12 | 2025-12-19 | 6d | 0d |  | 48h | 108,000 | 108,000 | 22,680 | 37 | A360 |
| 55 | 1.4.4.2 | Zone 4/Level 5 Floor | 5d | 2025-12-19 | 2025-12-25 | 54 |  |  | 2025-12-22 | 2025-12-26 | 5d | 48d |  | 40h | 45,000 | 45,000 |  | 38 | A370 |
| 56 | 1.4.4.3 | Zone 4/Level 5 Wall | 5d | 2025-12-29 | 2026-01-02 | 45 |  |  | 2025-12-30 | 2026-01-05 | 5d | 0d |  | 40h | 90,000 | 90,000 |  | 39 | A380 |
| 57 | 1.4.4.4 | Zone 4/Level 6 Floor | 5d | 2026-01-05 | 2026-01-09 | 56 |  |  | 2026-01-07 | 2026-01-13 | 5d | 37d |  | 40h | 45,000 | 45,000 |  | 40 | A390 |
| 58 | 1.4.4.5 | Zone 4/Level 6 Wall | 4d | 2026-01-13 | 2026-01-16 | 47 |  |  | 2026-01-14 | 2026-01-19 | 4d | 0d |  | 32h | 72,000 | 72,000 |  | 41 | A400 |
| 59 | 1.4.4.6 | Zone 4/Level 7 Floor | 4d | 2026-01-19 | 2026-01-22 | 58 |  |  | 2026-01-21 | 2026-01-26 | 4d | 28d |  | 32h | 36,000 | 36,000 |  | 42 | A410 |
| 60 | 1.4.4.7 | Zone 4/Level 7 Wall | 5d | 2026-01-27 | 2026-02-02 | 49 |  |  | 2026-01-28 | 2026-02-03 | 5d | 0d |  | 40h | 90,000 | 90,000 |  | 43 | A420 |
| 61 | 1.4.4.8 | Zone 4/Level 8 Floor | 5d | 2026-02-03 | 2026-02-09 | 60 |  |  | 2026-02-05 | 2026-02-11 | 5d | 16d |  | 40h | 45,000 | 45,000 |  | 44 | A430 |
| 62 | 1.4.4.9 | Zone 4/Level 8 Wall | 5d | 2026-02-11 | 2026-02-17 | 51 |  |  | 2026-02-12 | 2026-02-18 | 5d | 0d |  | 40h | 90,000 | 90,000 |  | 45 | A440 |
| 63 | 1.4.4.10 | Zone 4/Roof | 5d | 2026-02-25 | 2026-03-03 | 52 |  |  | 2026-02-26 | 2026-03-04 | 5d | 0d |  | 40h | 45,000 | 45,000 |  | 46 | A450 |

Notes:
- 31: 14828756
- 32: 14828757
- 33: 14828758
- 34: 14828759
- 35: 14828760
- 36: 14828761
- 37: 14828762
- 38: 14828763
- 39: 14828764
- 40: 14828765
- 41: 14828766
- 42: 14828767
- 43: 14828768
- 44: 14828769
- 45: 14828770
- 46: 14828771
- 47: 14828772
- 48: 14828773
- 49: 14828774
- 50: 14828775
- 51: 14828776
- 52: 14828777
- 53: 14828778
- 54: 14828779
- 55: 14828780
- 56: 14828781
- 57: 14828782
- 58: 14828783
- 59: 14828784
- 60: 14828785
- 61: 14828786
- 62: 14828787
- 63: 14828788

| ID | WBS | Task | Type | Duration | Start | Finish | Predecessors | Complete | Remaining | Baseline start | Baseline finish | Baseline duration | Total slack | Constraint | Baseline cost | UID | CustomID |
| --- | --- | --- | --- | --- | --- | --- | --- | --- | --- | --- | --- | --- | --- | --- | --- | --- | --- |
| 64 | 1.5 | **Milestone Schedule** |  | 97d | 2025-10-20 A | 2026-03-03 |  |  | 97d |  |  |  | 0d |  |  | 80 |  |
| 65 | 1.5.1 | /Milestone/ Level 4 Zone 3 Transfer Deck | milestone | 0d | 2025-10-20 A | 2025-10-20 A |  | 100% |  | 2025-10-20 | 2025-10-20 | 1d |  |  |  | 52 | A10 |
| 66 | 1.5.2 | /Milestone/ Level 4 Zone 5 Transfer Deck | milestone | 0d | 2025-11-28 A | 2025-11-28 A |  | 100% |  | 2025-11-28 | 2025-11-28 | 1d |  | start no earlier than 2025-11-28 |  | 53 | A650 |
| 67 | 1.5.3 | /Milestone/ Phase I Roof | milestone | 0d | 2026-02-13 | 2026-02-13 | 30FF, 41FF |  |  | 2026-02-04 | 2026-02-04 | 1d | 12d |  | 27,000 | 23 | A30 |
| 68 | 1.5.4 | /Milestone/ Phase II Roof | milestone | 0d | 2026-02-24 | 2026-02-24 | 52FF |  |  | 2026-02-24 | 2026-02-24 | 1d | 5d | start no earlier than 2026-02-04 | 18,000 | 35 | A40 |
| 69 | 1.5.5 | /Milestone/ Phase III Roof | milestone | 0d | 2026-03-03 | 2026-03-03 | 63FF, 67FF, 68FF |  |  | 2026-03-03 | 2026-03-03 | 1d | 0d |  | 27,000 | 47 | A50 |

Notes:
- 64: 14829107
- 65: 14828740
- 66: 14828741
- 67: 14828742
- 68: 14828743
- 69: 14828744
